# FUFO Highl level plan

How a schedule from MS Project changed from version to version. A marks actual dates.

## Version 1 (saved 2012-02-06)

Note of the change: Plan for VP

| ID | WBS | Task | Duration | Start | Finish | Predecessors | Complete | Total float | Constraint |
| --- | --- | --- | --- | --- | --- | --- | --- | --- | --- |
| 1 | 1 | **Streaming video from phone to computer** | 69d | 2012-02-06 A | 2012-05-10 |  | 1% | 73d |  |
| 2 |  | Make plan | 3d | 2012-02-06 A | 2012-02-08 |  | 35% | 76d | start no earlier than 2012-02-06 |
| 3 |  | Review plan and improve | 2d | 2012-02-09 | 2012-02-10 | 2 |  | 76d |  |
| 4 | 1.3 | **Training and design for video sending** | 5d | 2012-02-13 | 2012-02-17 | 3 |  | 76d |  |
| 5 | 1.3.1 | **Make SRS** | 3d | 2012-02-13 | 2012-02-15 |  |  | 76d |  |
| 6 |  | Introduction | 0.5d | 2012-02-13 | 2012-02-13 |  |  | 76d |  |
| 7 |  | Functional requirement | 2d | 2012-02-13 | 2012-02-15 | 6 |  | 76d |  |
| 8 |  | Non-functional requirement | 0.5d | 2012-02-15 | 2012-02-15 | 7 |  | 76d |  |
| 9 |  | Review SRS and improve | 2d | 2012-02-16 | 2012-02-17 | 8 |  | 76d |  |
| 10 | 1.4 | **Design** | 22d | 2012-02-20 | 2012-03-20 | 4 |  | 76d |  |
| 11 | 1.4.1 | **Make HLD** | 10d | 2012-02-20 | 2012-03-02 |  |  | 76d |  |
| 12 |  | Introduction | 0.5d | 2012-02-20 | 2012-02-20 |  |  | 83.5d |  |
| 13 |  | Wait for template | 10d | 2012-02-20 | 2012-03-02 |  |  | 76d |  |
| 14 |  | Review HLD and improve | 2d | 2012-02-20 | 2012-02-22 | 12 |  | 83.5d |  |
| 15 |  | Make DDD | 10d | 2012-03-05 | 2012-03-16 | 11 |  | 76d |  |
| 16 |  | Review DDD | 2d | 2012-03-19 | 2012-03-20 | 15 |  | 76d |  |
| 17 | 1.5 | **Coding** | 37d | 2012-03-21 | 2012-05-10 | 10 |  | 73d |  |
| 18 |  | Make general interface for sending and compressing video | 3d | 2012-03-21 | 2012-03-23 |  |  | 83d |  |
| 19 | 1.5.2 | **Send video over Internet** | 24d | 2012-03-26 | 2012-04-26 | 18 |  | 83d |  |
| 20 |  | Code recording video using back camera on Android | 4d | 2012-03-26 | 2012-03-29 |  |  | 83d |  |
| 21 |  | Code send frame from phone to computer | 10d | 2012-03-30 | 2012-04-12 | 20 |  | 83d |  |
| 22 |  | Code receive frame on computer | 10d | 2012-04-13 | 2012-04-26 | 21 |  | 83d |  |
| 23 | 1.5.3 | **Use h263 and h264 on the video sending** | 24d | 2012-03-26 | 2012-04-26 | 19SS |  | 73d |  |
| 24 |  | Reasearch how to compress and decompress video frame using h263 and h264 | 7d | 2012-03-26 | 2012-04-03 |  |  | 73d |  |
| 25 |  | Coding frame compressing function | 17d | 2012-04-04 | 2012-04-26 | 24 |  | 73d |  |
| 26 |  | Coding frame decompressing function | 17d | 2012-04-04 | 2012-04-26 | 25SS |  | 73d |  |
| 27 | 1.5.4 | **Improving video sending** | 10d | 2012-04-27 | 2012-05-10 | 23 |  | 73d |  |
| 28 |  | Combine code to send compressed video frame and decomress video frame after sending | 10d | 2012-04-27 | 2012-05-10 | 26 |  | 73d |  |
| 29 |  | training and design for actuator | 23d | 2012-02-05 | 2012-03-06 |  |  | 0d | start no earlier than 2012-02-05 |
| 30 |  | making the first FUFO | 30d | 2012-03-07 | 2012-04-17 | 29 |  | 0d |  |
| 31 |  | implement and improve dynamic balancing | 90d? | 2012-04-18 | 2012-08-21 | 30 |  | 0d |  |
| 32 |  | make bluetooth connection | 30d | 2012-02-05 | 2012-03-15 |  |  | 53d | start no earlier than 2012-02-05 |
| 33 |  | TCP/IP control from computer to FUFO (web) | 60d | 2012-03-16 | 2012-06-07 | 32 |  | 53d |  |

## Version 2 (saved 2012-02-06)

Note of the change: Update VP plan

Last finish stays 2012-08-21.

Changed:

| ID | Task | Start | Finish | Duration | Total float | Predecessors | Other |
| --- | --- | --- | --- | --- | --- | --- | --- |
| 1 | **Streaming video from phone to computer** |  |  | 69d → 68.5d | 73d → 73.5d |  |  |
| 4 | **Training and design for video sending** |  |  | 5d → 4.5d | 76d → 76.5d |  |  |
| 5 | **Make SRS** |  |  | 3d → 2.5d | 76d → 76.5d |  |  |
| 8 | Non-functional requirement | 2012-02-15 → 2012-02-14 (-1d) |  | 0.5d → 1d | 76d → 76.5d | 7 → 7FF | resources NguyenLK → YenTT |
| 9 | Review SRS and improve | 2012-02-16 → 2012-02-15 (-1d) |  |  | 76d → 76.5d |  |  |
| 10 | **Design** | 2012-02-20 → 2012-02-17 (-3d) |  |  | 76d → 76.5d |  |  |
| 11 | **Make HLD** | 2012-02-20 → 2012-02-17 (-3d) |  |  | 76d → 76.5d |  |  |
| 12 | Introduction | 2012-02-20 → 2012-02-17 (-3d) | 2012-02-20 → 2012-02-17 (-3d) |  | 83.5d → 84d |  |  |
| 13 | Wait for template | 2012-02-20 → 2012-02-17 (-3d) |  |  | 76d → 76.5d |  |  |
| 14 | Review HLD and improve |  | 2012-02-22 → 2012-02-21 (-1d) |  | 83.5d → 84d |  |  |
| 15 | Make DDD | 2012-03-05 → 2012-03-02 (-3d) |  |  | 76d → 76.5d |  |  |
| 16 | Review DDD | 2012-03-19 → 2012-03-16 (-3d) |  |  | 76d → 76.5d |  |  |
| 17 | **Coding** | 2012-03-21 → 2012-03-20 (-1d) |  |  | 73d → 73.5d |  |  |
| 18 | Make general interface for sending and compressing video | 2012-03-21 → 2012-03-20 (-1d) |  |  | 83d → 83.5d |  |  |
| 19 | **Send video over Internet** | 2012-03-26 → 2012-03-23 (-3d) |  |  | 83d → 83.5d |  |  |
| 20 | Code recording video using back camera on Android | 2012-03-26 → 2012-03-23 (-3d) |  |  | 83d → 83.5d |  |  |
| 21 | Code send frame from phone to computer | 2012-03-30 → 2012-03-29 (-1d) |  |  | 83d → 83.5d |  |  |
| 22 | Code receive frame on computer | 2012-04-13 → 2012-04-12 (-1d) |  |  | 83d → 83.5d |  |  |
| 23 | **Use h263 and h264 on the video sending** | 2012-03-26 → 2012-03-23 (-3d) |  |  | 73d → 73.5d |  |  |
| 24 | Reasearch how to compress and decompress video frame using h263 and h264 | 2012-03-26 → 2012-03-23 (-3d) |  |  | 73d → 73.5d |  |  |
| 25 | Coding frame compressing function | 2012-04-04 → 2012-04-03 (-1d) |  |  | 73d → 73.5d |  |  |
| 26 | Coding frame decompressing function | 2012-04-04 → 2012-04-03 (-1d) |  |  | 73d → 73.5d |  |  |
| 27 | **Improving video sending** | 2012-04-27 → 2012-04-26 (-1d) |  |  | 73d → 73.5d |  |  |
| 28 | Combine code to send compressed video frame and decomress video frame after sending | 2012-04-27 → 2012-04-26 (-1d) |  |  | 73d → 73.5d |  |  |
