# FUFO Highl level plan

How a schedule from MS Project changed from version to version. A marks actual dates.

## Version 1 (saved 2012-02-08)

Note of the change: add new plan for vp prọject

| ID | WBS | Task | Duration | Start | Finish | Predecessors | Complete | Total float | Constraint |
| --- | --- | --- | --- | --- | --- | --- | --- | --- | --- |
| 1 | 1 | **Streaming video from phone to computer** | 69.5d | 2012-02-06 A | 2012-05-11 |  | 1% | 72.5d |  |
| 2 |  | Make plan | 3d | 2012-02-06 A | 2012-02-08 |  | 35% | 76d | start no earlier than 2012-02-06 |
| 3 |  | Review plan and improve | 2d | 2012-02-09 | 2012-02-10 | 2 |  | 76d |  |
| 4 | 1.3 | **Training and design for video sending** | 4.5d | 2012-02-13 | 2012-02-17 | 3 |  | 72.5d |  |
| 5 | 1.3.1 | **Make SRS** | 2.5d | 2012-02-13 | 2012-02-15 |  |  | 72.5d |  |
| 6 |  | Introduction | 0.5d | 2012-02-13 | 2012-02-13 |  |  | 76d |  |
| 7 |  | Functional requirement | 2d | 2012-02-13 | 2012-02-15 | 6 |  | 76d |  |
| 8 |  | Non-functional requirement | 1d | 2012-02-14 | 2012-02-15 | 7FF |  | 75.5d |  |
| 9 |  | Review SRS and improve | 2d | 2012-02-15 | 2012-02-17 | 8 |  | 76.5d |  |
| 10 | 1.4 | **Design** | 23d | 2012-02-17 | 2012-03-21 | 4 |  | 72.5d |  |
| 11 | 1.4.1 | **Make HLD** | 9d | 2012-02-17 | 2012-03-01 |  |  | 72.5d |  |
| 12 |  | Introduction | 0.5d | 2012-02-17 | 2012-02-17 |  |  | 74.5d |  |
| 13 |  | High level function description | 1.5d | 2012-02-20 | 2012-02-21 | 12 |  | 74.5d |  |
| 14 |  | System architecture design | 3d | 2012-02-21 | 2012-02-24 | 13 |  | 74.5d |  |
| 15 |  | Screen design | 1d | 2012-02-21 | 2012-02-22 | 14SS |  | 95.5d |  |
| 16 |  | Application requirement | 1d | 2012-02-24 | 2012-02-27 | 14 |  | 75.5d |  |
| 17 |  | Diagrams (activity,…) | 1d | 2012-02-27 | 2012-02-28 | 16 |  | 75.5d |  |
| 18 |  | Interface | 2d | 2012-02-28 | 2012-03-01 | 17 |  | 75.5d |  |
| 19 |  | Review HLD and improve | 2d | 2012-03-01 | 2012-03-05 | 18 |  | 75.5d |  |
| 20 | 1.4.3 | **Make DDD** | 10d | 2012-03-05 | 2012-03-19 | 19 |  | 72.5d |  |
| 21 |  | Function specification | 1d | 2012-03-05 | 2012-03-06 |  |  | 75.5d |  |
| 22 |  | Sequence diagram for all functions | 3d | 2012-03-06 | 2012-03-09 | 21 |  | 75.5d |  |
| 23 |  | Class specification | 5d | 2012-03-09 | 2012-03-16 | 22 |  | 75.5d |  |
| 24 |  | Screen detail design | 1d | 2012-03-16 | 2012-03-19 | 23 |  | 75.5d |  |
| 25 |  | Review DDD | 2d | 2012-03-19 | 2012-03-21 | 24 |  | 75.5d |  |
| 26 | 1.5 | **Coding** | 34d | 2012-03-21 | 2012-05-08 | 10 |  | 72.5d |  |
| 27 | 1.5.1 | **Send video over Internet** | 24d | 2012-03-21 | 2012-04-24 |  |  | 82.5d |  |
| 28 |  | Code recording video using back camera on Android | 4d | 2012-03-21 | 2012-03-27 |  |  | 82.5d |  |
| 29 |  | Code send frame from phone to computer | 10d | 2012-03-27 | 2012-04-10 | 28 |  | 82.5d |  |
| 30 |  | Code receive frame on computer | 10d | 2012-04-10 | 2012-04-24 | 29 |  | 82.5d |  |
| 31 | 1.5.2 | **Use h263 and h264 on the video sending** | 24d | 2012-03-21 | 2012-04-24 | 27SS |  | 72.5d |  |
| 32 |  | Reasearch how to compress and decompress video frame using h263 and h264 | 7d | 2012-03-21 | 2012-03-30 |  |  | 72.5d |  |
| 33 |  | Coding frame compressing function | 17d | 2012-03-30 | 2012-04-24 | 32 |  | 72.5d |  |
| 34 |  | Coding frame decompressing function | 17d | 2012-03-30 | 2012-04-24 | 33SS |  | 72.5d |  |
| 35 | 1.5.3 | **Improving video sending** | 10d | 2012-04-24 | 2012-05-08 | 31 |  | 72.5d |  |
| 36 |  | Combine code to send compressed video frame and decomress video frame after sending | 10d | 2012-04-24 | 2012-05-08 | 34 |  | 72.5d |  |
| 37 |  | Testing | 3d | 2012-05-08 | 2012-05-11 | 26 |  | 72.5d |  |
| 38 |  | training and design for actuator | 23d | 2012-02-05 | 2012-03-06 |  |  | 0d | start no earlier than 2012-02-05 |
| 39 |  | making the first FUFO | 30d | 2012-03-07 | 2012-04-17 | 38 |  | 0d |  |
| 40 |  | implement and improve dynamic balancing | 90d? | 2012-04-18 | 2012-08-21 | 39 |  | 0d |  |
| 41 |  | make bluetooth connection | 30d | 2012-02-05 | 2012-03-15 |  |  | 53d | start no earlier than 2012-02-05 |
| 42 |  | TCP/IP control from computer to FUFO (web) | 60d | 2012-03-16 | 2012-06-07 | 41 |  | 53d |  |

## Version 2 (saved 2012-02-28)

Note of the change: Update plan for % complete on make srs introduction

Last finish 2012-08-21 → 2012-05-28 (-85d). Complete tasks 0 → 3.

Removed: 38 training and design for actuator; 39 making the first FUFO; 40 implement and improve dynamic balancing; 41 make bluetooth connection; 42 TCP/IP control from computer to FUFO (web)

Changed:

| ID | Task | Start | Finish | Duration | Complete | Total float | Other |
| --- | --- | --- | --- | --- | --- | --- | --- |
| 1 | **VP Project** |  | 2012-05-11 → 2012-05-28 (+17d) | 69.5d → 80.5d | 1% → 5% | 72.5d → 0d | was named Streaming video from phone to computer |
| 2 | Make plan |  | 2012-02-08 A |  | 35% → 100% | 76d → none |  |
| 3 | Review plan and improve | 2012-02-09 A | 2012-02-10 A |  | 0% → 100% | 76d → none |  |
| 4 | **Training and design for video sending** | 2012-02-13 → 2012-02-28 A (+15d) | 2012-02-17 → 2012-03-05 (+17d) |  | 0% → 9% | 72.5d → 0d |  |
| 5 | **Make SRS** | 2012-02-13 → 2012-02-28 A (+15d) | 2012-02-15 → 2012-03-01 (+15d) |  | 0% → 14% | 72.5d → 0d |  |
| 6 | Introduction | 2012-02-13 → 2012-02-28 A (+15d) | 2012-02-13 → 2012-02-28 A (+15d) |  | 0% → 100% | 76d → none | constraint none → start no earlier than 2012-02-28 |
| 7 | Functional requirement | 2012-02-13 → 2012-02-28 (+15d) | 2012-02-15 → 2012-03-01 (+15d) |  |  | 76d → 0d |  |
| 8 | Non-functional requirement | 2012-02-14 → 2012-02-29 (+15d) | 2012-02-15 → 2012-03-01 (+15d) |  |  | 75.5d → 0d |  |
| 9 | Review SRS and improve | 2012-02-15 → 2012-03-01 (+15d) | 2012-02-17 → 2012-03-05 (+17d) |  |  | 76.5d → 0d |  |
| 10 | **Design** | 2012-02-17 → 2012-03-05 (+17d) | 2012-03-21 → 2012-04-05 (+15d) |  |  | 72.5d → 0d |  |
| 11 | **Make HLD** | 2012-02-17 → 2012-03-05 (+17d) | 2012-03-01 → 2012-03-16 (+15d) |  |  | 72.5d → 0d |  |
| 12 | Introduction | 2012-02-17 → 2012-03-05 (+17d) | 2012-02-17 → 2012-03-05 (+17d) |  |  | 74.5d → 0d |  |
| 13 | High level function description | 2012-02-20 → 2012-03-06 (+15d) | 2012-02-21 → 2012-03-07 (+15d) |  |  | 74.5d → 0d |  |
| 14 | System architecture design | 2012-02-21 → 2012-03-07 (+15d) | 2012-02-24 → 2012-03-12 (+17d) |  |  | 74.5d → 0d |  |
| 15 | Screen design | 2012-02-21 → 2012-03-07 (+15d) | 2012-02-22 → 2012-03-08 (+15d) |  |  | 95.5d → 20d |  |
| 16 | Application requirement | 2012-02-24 → 2012-03-12 (+17d) | 2012-02-27 → 2012-03-13 (+15d) |  |  | 75.5d → 0d |  |
| 17 | Diagrams (activity,…) | 2012-02-27 → 2012-03-13 (+15d) | 2012-02-28 → 2012-03-14 (+15d) |  |  | 75.5d → 0d |  |
| 18 | Interface | 2012-02-28 → 2012-03-14 (+15d) | 2012-03-01 → 2012-03-16 (+15d) |  |  | 75.5d → 0d |  |
| 19 | Review HLD and improve | 2012-03-01 → 2012-03-16 (+15d) | 2012-03-05 → 2012-03-20 (+15d) |  |  | 75.5d → 0d |  |
| 20 | **Make DDD** | 2012-03-05 → 2012-03-20 (+15d) | 2012-03-19 → 2012-04-03 (+15d) |  |  | 72.5d → 0d |  |
| 21 | Function specification | 2012-03-05 → 2012-03-20 (+15d) | 2012-03-06 → 2012-03-21 (+15d) |  |  | 75.5d → 0d |  |
| 22 | Sequence diagram for all functions | 2012-03-06 → 2012-03-21 (+15d) | 2012-03-09 → 2012-03-26 (+17d) |  |  | 75.5d → 0d |  |
| 23 | Class specification | 2012-03-09 → 2012-03-26 (+17d) | 2012-03-16 → 2012-04-02 (+17d) |  |  | 75.5d → 0d |  |
| 24 | Screen detail design | 2012-03-16 → 2012-04-02 (+17d) | 2012-03-19 → 2012-04-03 (+15d) |  |  | 75.5d → 0d |  |
| 25 | Review DDD | 2012-03-19 → 2012-04-03 (+15d) | 2012-03-21 → 2012-04-05 (+15d) |  |  | 75.5d → 0d |  |
| 26 | **Coding** | 2012-03-21 → 2012-04-05 (+15d) | 2012-05-08 → 2012-05-23 (+15d) |  |  | 72.5d → 0d |  |
| 27 | **Send video over Internet** | 2012-03-21 → 2012-04-05 (+15d) | 2012-04-24 → 2012-05-09 (+15d) |  |  | 82.5d → 10d |  |
| 28 | Code recording video using back camera on Android | 2012-03-21 → 2012-04-05 (+15d) | 2012-03-27 → 2012-04-11 (+15d) |  |  | 82.5d → 10d |  |
| 29 | Code send frame from phone to computer | 2012-03-27 → 2012-04-11 (+15d) | 2012-04-10 → 2012-04-25 (+15d) |  |  | 82.5d → 10d |  |
| 30 | Code receive frame on computer | 2012-04-10 → 2012-04-25 (+15d) | 2012-04-24 → 2012-05-09 (+15d) |  |  | 82.5d → 10d |  |
| 31 | **Use h263 and h264 on the video sending** | 2012-03-21 → 2012-04-05 (+15d) | 2012-04-24 → 2012-05-09 (+15d) |  |  | 72.5d → 0d |  |
| 32 | Reasearch how to compress and decompress video frame using h263 and h264 | 2012-03-21 → 2012-04-05 (+15d) | 2012-03-30 → 2012-04-16 (+17d) |  |  | 72.5d → 0d |  |
| 33 | Coding frame compressing function | 2012-03-30 → 2012-04-16 (+17d) | 2012-04-24 → 2012-05-09 (+15d) |  |  | 72.5d → 0d |  |
| 34 | Coding frame decompressing function | 2012-03-30 → 2012-04-16 (+17d) | 2012-04-24 → 2012-05-09 (+15d) |  |  | 72.5d → 0d |  |
| 35 | **Improving video sending** | 2012-04-24 → 2012-05-09 (+15d) | 2012-05-08 → 2012-05-23 (+15d) |  |  | 72.5d → 0d |  |
| 36 | Combine code to send compressed video frame and decomress video frame after sending | 2012-04-24 → 2012-05-09 (+15d) | 2012-05-08 → 2012-05-23 (+15d) |  |  | 72.5d → 0d |  |
| 37 | Testing | 2012-05-08 → 2012-05-23 (+15d) | 2012-05-11 → 2012-05-28 (+17d) |  |  | 72.5d → 0d |  |
