# FUFO_PLAN_

How a schedule from MS Project changed from version to version. A marks actual dates.

## Version 1 (saved 2012-04-19)

Note of the change: Update full plan and delete all unnecessary plan.

| ID | WBS | Task | Duration | Start | Finish | Predecessors | Complete | Total float | Constraint |
| --- | --- | --- | --- | --- | --- | --- | --- | --- | --- |
| 1 |  | Công việc của PM | 93d | 2012-04-16 | 2012-08-22 |  |  | 0d | start no earlier than 2012-04-16 |
| 3 | 2 | **Sub-project FUFO** | 75d | 2012-04-16 A | 2012-07-27 |  | 2% | 18d |  |
| 4 | 2.1 | **FUFO - Giai đoạn 1** | 20d | 2012-04-16 A | 2012-05-11 |  | 6% | 0d |  |
| 5 |  | Training PID | 2d | 2012-04-16 | 2012-04-17 |  |  | 18d |  |
| 6 | 2.1.2 | **Test mạch PCB** | 8d | 2012-04-20 | 2012-05-01 |  |  | 0d |  |
| 7 |  | Hàn các linh kiện lên mạch | 1d | 2012-04-20 | 2012-04-20 |  |  | 0d | start no earlier than 2012-04-20 |
| 8 |  | Test output PWM trên mạch | 3d | 2012-04-23 | 2012-04-25 | 7 |  | 0d |  |
| 9 |  | Code hiển thị LCD để debug | 1d | 2012-04-20 | 2012-04-20 |  |  | 15d | start no earlier than 2012-04-20 |
| 10 |  | Code demo bluetooth trên android | 4d | 2012-04-23 | 2012-04-26 | 7 |  | 4d |  |
| 11 |  | Code và test module bluetooth | 3d | 2012-04-27 | 2012-05-01 | 10 |  | 4d |  |
| 12 |  | Nghiên cứu Quadrotor dynamic | 2d | 2012-04-16 A | 2012-04-17 A |  | 100% |  |  |
| 13 |  | Design software cho phần nhúng | 7d | 2012-04-26 | 2012-05-04 | 8 |  | 0d |  |
| 14 |  | Detail design cho chức năng bluetooth | 2d | 2012-05-02 | 2012-05-03 | 11 |  | 4d |  |
| 15 |  | Detail design cho chức năng đo độ nghiêng | 2d | 2012-05-04 | 2012-05-07 | 14 |  | 4d |  |
| 16 |  | Tạo bộ test case cho phần embedded | 5d | 2012-05-07 | 2012-05-11 | 13 |  | 0d |  |
| 17 | 2.2 | **FUFO - Giai đoạn 2** | 25d | 2012-05-14 | 2012-06-15 | 4 |  | 0d |  |
| 18 | 2.2.1 | **Code phần embedded** | 15d | 2012-05-14 | 2012-06-01 |  |  | 0d |  |
| 19 |  | Code PID và khung của toàn bộ software | 10d | 2012-05-14 | 2012-05-25 |  |  | 0d |  |
| 20 |  | Code chức năng lấy tín hiệu từ sensor | 8d | 2012-05-14 | 2012-05-23 |  |  | 5d |  |
| 21 |  | Code chức năng bluetooth | 2d | 2012-05-24 | 2012-05-25 | 20 |  | 5d |  |
| 22 |  | Integrate các phần của Hưng và Thắng | 5d | 2012-05-28 | 2012-06-01 | 19 |  | 0d |  |
| 23 | 2.2.2 | **Test intergration của phần embedded** | 10d | 2012-06-04 | 2012-06-15 | 18 |  | 0d |  |
| 24 |  | Test trên máy bay | 10d | 2012-06-04 | 2012-06-15 |  |  | 0d |  |
| 25 |  | Sửa lại những gì chưa đúng | 10d | 2012-06-04 | 2012-06-15 |  |  | 0d |  |
| 26 | 2.3 | **FUFO - Giai đoạn 3** | 25d | 2012-06-18 | 2012-07-20 | 17 |  | 0d |  |
| 27 |  | Thiết kế mô hình của quadrotor version 2 | 10d | 2012-06-18 | 2012-06-29 |  |  | 0d |  |
| 28 |  | Code chức năng cân bằng động | 10d | 2012-06-18 | 2012-06-29 |  |  | 15d |  |
| 29 |  | Intergration test Quadrotor version 2 | 15d | 2012-07-02 | 2012-07-20 | 27 |  | 0d |  |
| 30 | 2.4 | **FUFO - Giai đoạn 4** | 5d | 2012-07-23 | 2012-07-27 | 26 |  | 18d |  |
| 31 |  | Hoàn thiện báo cáo về khả năng bay của Quadrotor version 2 | 5d | 2012-07-23 | 2012-07-27 |  |  | 18d |  |
| 33 | 3 | **Sub-project VP** | 75d | 2012-04-16 A | 2012-07-27 |  | 5% | 18d |  |
| 34 |  | Detail design cho VP | 5d | 2012-04-16 A | 2012-04-20 |  | 40% | 18d |  |
| 35 |  | Tạo bộ test case cho VP | 5d | 2012-04-23 | 2012-04-27 | 34 |  | 83d |  |
| 36 |  | code giao diện VP trên PC dựa theo design trước đó | 15d | 2012-04-23 | 2012-05-11 | 34 |  | 18d |  |
| 37 |  | Test phần giao diện nhận ảnh trên PC dựa theo test case | 3d | 2012-05-14 | 2012-05-16 | 36 |  | 70d |  |
| 38 |  | training TCP/IP in java | 5d | 2012-04-16 A | 2012-04-20 |  | 80% | 88d | finish no earlier than 2012-04-20 |
| 39 | 3.6 | **Code android** | 10d | 2012-05-14 | 2012-05-25 | 36 |  | 18d |  |
| 40 |  | Code ứng dụng truyền camera qua UDP | 5d | 2012-05-14 | 2012-05-18 |  |  | 18d |  |
| 41 |  | Code chức năng điều khiển bằng bluetooth | 5d | 2012-05-21 | 2012-05-25 | 40 |  | 18d |  |
| 42 |  | Code chức năng truyền TCP/IP | 5d | 2012-05-21 | 2012-05-25 | 40 |  | 18d |  |
| 43 |  | Test integration của VP | 5d | 2012-05-28 | 2012-06-01 | 39 |  | 18d |  |
| 44 |  | Test integration với FUFO | 35d | 2012-06-04 | 2012-07-20 | 18 |  | 23d |  |
| 45 |  | Tiến hành cải tiến truyền video | 30d | 2012-06-04 | 2012-07-13 | 43 |  | 18d |  |
| 46 |  | Hoàn thiện báo cáo về truyền video real-time | 10d | 2012-07-16 | 2012-07-27 | 45 |  | 18d |  |
| 48 |  | Làm tài liệu tốt nghiệp | 10d | 2012-07-23 | 2012-08-03 | 26 |  | 0d |  |
| 50 |  | "buffer time!" | 13d | 2012-08-06 | 2012-08-22 | 48 |  | 0d |  |

## Version 2 (saved 2012-05-15)

Note of the change: full plan update

Last finish stays 2012-08-22. Complete tasks 1 → 4.

Added:

| ID | Task | Duration | Start | Finish | Predecessors | Resources |
| --- | --- | --- | --- | --- | --- | --- |
| 11 | Code và test module Sensor | 1d | 2012-05-21 | 2012-05-21 | 10 | Thắng |
| 12 | Design PCB v2 | 16d | 2012-04-20 A | 2012-05-11 A |  | Hưng |

Removed: 10 Code demo bluetooth trên android

Changed:

| ID | Task | Start | Finish | Duration | Complete | Total float | Predecessors | Other |
| --- | --- | --- | --- | --- | --- | --- | --- | --- |
| 3 | **Sub-project FUFO** |  | 2012-07-27 → 2012-08-01 (+5d) | 75d → 78d | 2% → 14% | 18d → 15d |  |  |
| 4 | **FUFO - Giai đoạn 1** |  | 2012-05-11 → 2012-06-01 (+21d) | 20d → 35d | 6% → 27% | 0d → 7d |  |  |
| 5 | Training PID | 2012-04-16 → 2012-05-14 A (+28d) | 2012-04-17 → 2012-05-18 (+31d) | 2d → 5d | 0% → 4% | 18d → 0d |  | constraint none → finish no earlier than 2012-05-18 |
| 6 | **Test mạch PCB v1** | 2012-04-20 A | 2012-05-01 → 2012-05-21 (+20d) | 8d → 22d | 0% → 5% | 0d → 16d |  | was named Test mạch PCB |
| 7 | Hàn các linh kiện lên mạch | 2012-04-20 A |  |  | 0% → 95% | 0d → 6d |  |  |
| 8 | Test output PWM trên mạch | 2012-04-23 → 2012-04-20 A (-3d) | 2012-04-25 → 2012-05-11 (+16d) | 3d → 15d |  | 0d → 22d |  | constraint none → finish no earlier than 2012-05-11 |
| 9 | Code hiển thị LCD để debug | 2012-04-20 A | 2012-04-20 → 2012-05-11 (+21d) | 1d → 16d | 0% → 6% | 15d → 6d | none → 7 | constraint start no earlier than 2012-04-20 → finish no earlier than 2012-05-11 |
| 10 | Code và test module bluetooth | 2012-04-27 → 2012-05-14 (+17d) | 2012-05-01 → 2012-05-18 (+17d) | 3d → 5d |  | 4d → 6d | Code demo bluetooth trên android → 9 | constraint none → finish no earlier than 2012-05-18 |
| 14 | Design software cho phần nhúng | 2012-04-26 → 2012-05-21 (+25d) | 2012-05-04 → 2012-05-25 (+21d) | 7d → 5d |  |  | 8 → 5, 8 |  |
| 15 | Detail design cho chức năng bluetooth | 2012-05-02 → 2012-05-21 (+19d) | 2012-05-03 → 2012-05-22 (+19d) |  |  | 4d → 6d |  |  |
| 16 | Detail design cho chức năng đo độ nghiêng | 2012-05-04 → 2012-05-23 (+19d) | 2012-05-07 → 2012-05-24 (+17d) |  |  | 4d → 6d |  |  |
| 17 | Tạo bộ test case cho phần embedded | 2012-05-07 → 2012-05-28 (+21d) | 2012-05-11 → 2012-06-01 (+21d) |  |  |  |  |  |
| 18 | **FUFO - Giai đoạn 2** | 2012-05-14 → 2012-06-04 (+21d) | 2012-06-15 → 2012-07-04 (+19d) | 25d → 23d |  |  |  |  |
| 19 | **Code phần embedded** | 2012-05-14 → 2012-06-04 (+21d) | 2012-06-01 → 2012-06-20 (+19d) | 15d → 13d |  |  |  |  |
| 20 | Code PID và khung của toàn bộ software | 2012-05-14 → 2012-06-04 (+21d) | 2012-05-25 → 2012-06-15 (+21d) |  |  |  |  |  |
| 21 | Code chức năng lấy tín hiệu từ sensor | 2012-05-14 → 2012-06-04 (+21d) | 2012-05-23 → 2012-06-13 (+21d) |  |  | 5d → 3d |  |  |
| 22 | Code chức năng bluetooth | 2012-05-24 → 2012-06-14 (+21d) | 2012-05-25 → 2012-06-15 (+21d) |  |  | 5d → 3d |  |  |
| 23 | Integrate các phần của Hưng và Thắng | 2012-05-28 → 2012-06-18 (+21d) | 2012-06-01 → 2012-06-20 (+19d) | 5d → 3d |  |  |  |  |
| 24 | **Test intergration của phần embedded** | 2012-06-04 → 2012-06-21 (+17d) | 2012-06-15 → 2012-07-04 (+19d) |  |  |  |  |  |
| 25 | Test trên máy bay | 2012-06-04 → 2012-06-21 (+17d) | 2012-06-15 → 2012-07-04 (+19d) |  |  |  |  |  |
| 26 | Sửa lại những gì chưa đúng | 2012-06-04 → 2012-06-21 (+17d) | 2012-06-15 → 2012-07-04 (+19d) |  |  |  |  |  |
| 27 | **FUFO - Giai đoạn 3** | 2012-06-18 → 2012-07-05 (+17d) | 2012-07-20 → 2012-07-25 (+5d) | 25d → 15d |  |  |  |  |
| 28 | Thiết kế mô hình của quadrotor version 2 | 2012-06-18 → 2012-07-05 (+17d) | 2012-06-29 → 2012-07-11 (+12d) | 10d → 5d |  |  |  |  |
| 29 | Code chức năng cân bằng động | 2012-06-18 → 2012-07-05 (+17d) | 2012-06-29 → 2012-07-18 (+19d) |  |  | 15d → 5d |  |  |
| 30 | Intergration test Quadrotor version 2 | 2012-07-02 → 2012-07-12 (+10d) | 2012-07-20 → 2012-07-25 (+5d) | 15d → 10d |  |  |  |  |
| 31 | **FUFO - Giai đoạn 4** | 2012-07-23 → 2012-07-26 (+3d) | 2012-07-27 → 2012-08-01 (+5d) |  |  | 18d → 15d |  |  |
| 32 | Hoàn thiện báo cáo về khả năng bay của Quadrotor version 2 | 2012-07-23 → 2012-07-26 (+3d) | 2012-07-27 → 2012-08-01 (+5d) |  |  | 18d → 15d |  |  |
| 34 | **Sub-project VP** |  | 2012-07-27 → 2012-08-08 (+12d) | 75d → 83d | 5% → 16% | 18d → 10d |  |  |
| 35 | Detail design cho VP |  | 2012-04-20 A |  | 40% → 100% | 18d → none |  |  |
| 36 | Tạo bộ test case cho VP | 2012-04-23 A |  |  | 0% → 20% |  |  |  |
| 37 | code giao diện VP trên PC dựa theo design trước đó | 2012-04-23 A |  |  | 0% → 35% | 18d → 20.67d |  |  |
| 39 | training TCP/IP in java |  | 2012-04-20 A |  | 80% → 100% | 88d → none |  |  |
| 40 | **Code android** | 2012-05-14 A |  |  | 0% → 27% |  |  |  |
| 41 | Code ứng dụng truyền camera qua UDP | 2012-05-14 A |  |  | 0% → 80% |  |  |  |
| 45 | Test integration với FUFO | 2012-06-04 → 2012-06-21 (+17d) | 2012-07-20 → 2012-08-08 (+19d) |  |  | 23d → 10d |  |  |
| 49 | hoàn thiện tài liệu tốt nghiệp | 2012-07-23 → 2012-07-26 (+3d) | 2012-08-03 → 2012-08-08 (+5d) |  |  |  |  | was named Làm tài liệu tốt nghiệp |
| 51 | "buffer time!" | 2012-08-06 → 2012-08-09 (+3d) |  | 13d → 10d |  |  |  | constraint none → finish no earlier than 2012-08-22; resources none → cả nhóm |

## Version 3 (saved 2012-08-13)

Note of the change: english version

Last finish stays 2012-08-22. Complete tasks 4 → 36.

Changed:

| ID | Task | Start | Finish | Duration | Complete | Total float | Other |
| --- | --- | --- | --- | --- | --- | --- | --- |
| 1 | PM tasks |  |  |  |  |  | was named Công việc của PM; resources Phong; Yến → Phong; Yen |
| 3 | **Sub-project FUFO** |  | 2012-08-01 A |  | 14% → 100% | 15d → none |  |
| 4 | **FUFO - phase 1** |  | 2012-06-01 A |  | 27% → 100% | 7d → none | was named FUFO - Giai đoạn 1 |
| 5 | Training PID theories |  | 2012-05-18 A |  | 4% → 100% | 0d → none | was named Training PID; resources Hưng → Hung |
| 6 | **Test PCB v1.0** |  | 2012-05-21 → 2012-05-23 A (+2d) | 22d → 24d | 5% → 100% | 16d → none | was named Test mạch PCB v1 |
| 7 | Soldering part |  | 2012-04-20 A |  | 95% → 100% | 6d → none | was named Hàn các linh kiện lên mạch; resources Hưng; Thắng → Hung; Thang |
| 8 | Test output PWM | 2012-04-20 A → 2012-04-23 A (+3d) | 2012-05-11 A |  | 0% → 100% | 22d → none | was named Test output PWM trên mạch; resources Hưng → Hung |
| 9 | Test Debug LCD | 2012-04-20 A → 2012-04-23 A (+3d) | 2012-05-11 → 2012-05-15 A (+4d) |  | 6% → 100% | 6d → none | was named Code hiển thị LCD để debug; resources Thắng → Thang |
| 10 | Test bluetooth module | 2012-05-14 → 2012-05-16 A (+2d) | 2012-05-18 → 2012-05-22 A (+4d) |  | 0% → 100% | 6d → none | was named Code và test module bluetooth; resources Thắng → Thang |
| 11 | Test sensor module | 2012-05-21 → 2012-05-23 A (+2d) | 2012-05-21 → 2012-05-23 A (+2d) |  | 0% → 100% | 16d → none | was named Code và test module Sensor; resources Thắng → Thang |
| 12 | Design PCB v2.0 |  |  |  |  |  | was named Design PCB v2; resources Hưng → Hung |
| 13 | Study quadrocopter dynamic |  |  |  |  |  | was named Nghiên cứu Quadrotor dynamic; resources Thắng → Thang |
| 14 | embedded software Architecture design | 2012-05-21 A | 2012-05-25 A |  | 0% → 100% | 0d → none | was named Design software cho phần nhúng; resources Hưng → Hung |
| 15 | Bluetooth function design | 2012-05-21 → 2012-05-23 A (+2d) | 2012-05-22 → 2012-05-24 A (+2d) |  | 0% → 100% | 6d → none | was named Detail design cho chức năng bluetooth; resources Thắng → Thang |
| 16 | altitude indicator and measurement function design | 2012-05-23 → 2012-05-25 A (+2d) | 2012-05-24 → 2012-05-28 A (+4d) |  | 0% → 100% | 6d → none | was named Detail design cho chức năng đo độ nghiêng; resources Thắng → Thang |
| 17 | Embedded software's TC design | 2012-05-28 A | 2012-06-01 A |  | 0% → 100% | 0d → none | was named Tạo bộ test case cho phần embedded; resources Hưng; Thắng → Hung; Thang |
| 18 | **FUFO - phase 2** | 2012-06-04 A | 2012-07-04 A |  | 0% → 100% | 0d → none | was named FUFO - Giai đoạn 2 |
| 19 | **embedded software coding** | 2012-06-04 A | 2012-06-20 A |  | 0% → 100% | 0d → none | was named Code phần embedded |
| 20 | PID controller implementation | 2012-06-04 A | 2012-06-15 A |  | 0% → 100% | 0d → none | was named Code PID và khung của toàn bộ software; resources Hưng → Hung |
| 21 | Sensor's data analysis | 2012-06-04 A | 2012-06-13 A |  | 0% → 100% | 3d → none | was named Code chức năng lấy tín hiệu từ sensor; resources Thắng → Thang |
| 22 | Bluetooth function implementation | 2012-06-14 A | 2012-06-15 A |  | 0% → 100% | 3d → none | was named Code chức năng bluetooth; resources Thắng → Thang |
| 23 | Integration of Hung and Thang parts | 2012-06-18 A | 2012-06-20 A |  | 0% → 100% | 0d → none | was named Integrate các phần của Hưng và Thắng; resources Hưng; Thắng → Hung; Thang |
| 24 | **Quadrocopter test** | 2012-06-21 A | 2012-07-04 A |  | 0% → 100% | 0d → none | was named Test intergration của phần embedded |
| 25 | Test quadrocopter | 2012-06-21 A | 2012-07-04 A |  | 0% → 100% | 0d → none | was named Test trên máy bay; resources Nguyên; Phong; Yến → Phong; Nguyen; Yen |
| 26 | fix bugs | 2012-06-21 A | 2012-07-04 A |  | 0% → 100% | 0d → none | was named Sửa lại những gì chưa đúng; resources Hưng; Thắng → Hung; Thang |
| 27 | **FUFO - Giai đoạn 3** | 2012-07-05 A | 2012-07-25 A |  | 0% → 100% | 0d → none |  |
| 28 | create mechanical version 2.0 of quadrocopter | 2012-07-05 A | 2012-07-11 A |  | 0% → 100% | 0d → none | was named Thiết kế mô hình của quadrotor version 2; resources Thắng → Thang |
| 29 | PID tuning | 2012-07-05 A | 2012-07-18 A |  | 0% → 100% | 5d → none | was named Code chức năng cân bằng động; resources Hưng → Hung |
| 30 | integration test of the system | 2012-07-12 A | 2012-07-25 A |  | 0% → 100% | 0d → none | was named Intergration test Quadrotor version 2; resources Thắng; Hưng; Nguyên → Thang; Hung; Nguyen |
| 31 | **FUFO - Giai đoạn 4** | 2012-07-26 A | 2012-08-01 A |  | 0% → 100% | 15d → none |  |
| 32 | Making Final report | 2012-07-26 A | 2012-08-01 A |  | 0% → 100% | 15d → none | was named Hoàn thiện báo cáo về khả năng bay của Quadrotor version 2; resources Hưng; Thắng → Hung; Thang |
| 34 | **Sub-project VP** |  | 2012-08-08 → 2012-08-13 A (+5d) | 83d → 85.5d | 16% → 100% | 10d → none |  |
| 35 | Detail design for VP |  |  |  |  |  | was named Detail design cho VP; resources Nguyên → Nguyen |
| 36 | Test case design for VP |  | 2012-04-27 → 2012-04-30 A (+3d) |  | 20% → 100% | 83d → none | was named Tạo bộ test case cho VP; resources Yến → Yen |
| 37 | interface implementation |  | 2012-05-11 → 2012-05-21 A (+10d) |  | 35% → 100% | 20.67d → none | was named code giao diện VP trên PC dựa theo design trước đó; resources Nguyên → Nguyen |
| 38 | Test Interface and video viewing function | 2012-05-14 → 2012-05-21 A (+7d) | 2012-05-16 → 2012-05-24 A (+8d) |  | 0% → 100% | 70d → none | was named Test phần giao diện nhận ảnh trên PC dựa theo test case; resources Yến → Yen |
| 39 | Training TCP/IP for tester |  |  |  |  |  | was named training TCP/IP in java; resources Yến → Yen |
| 40 | **Code android** | 2012-05-14 A → 2012-05-21 A (+7d) | 2012-05-25 → 2012-06-11 A (+17d) | 10d → 15.25d | 27% → 100% | 18d → none |  |
| 41 | Code video transmission function | 2012-05-14 A → 2012-05-21 A (+7d) | 2012-05-18 → 2012-06-04 A (+17d) |  | 80% → 100% | 18d → none | was named Code ứng dụng truyền camera qua UDP; resources Nguyên → Nguyen |
| 42 | Code bluetooth controlling function | 2012-05-21 → 2012-06-04 A (+14d) | 2012-05-25 → 2012-06-11 A (+17d) |  | 0% → 100% | 18d → none | was named Code chức năng điều khiển bằng bluetooth; resources Nguyên → Nguyen |
| 43 | Code command control function | 2012-05-21 → 2012-06-04 A (+14d) | 2012-05-25 → 2012-06-11 A (+17d) |  | 0% → 100% | 18d → none | was named Code chức năng truyền TCP/IP; resources Yến → Yen |
| 44 | Intergration test inside VP | 2012-05-28 → 2012-06-11 A (+14d) | 2012-06-01 → 2012-06-18 A (+17d) |  | 0% → 100% | 18d → none | was named Test integration của VP; resources Yến → Yen |
| 45 | Integration test of the system | 2012-06-21 A | 2012-08-08 A |  | 0% → 100% | 10d → none | was named Test integration với FUFO; resources Thắng; Hưng → Thang; Hung |
| 46 | Improving | 2012-06-04 → 2012-06-18 A (+14d) | 2012-07-13 → 2012-07-30 A (+17d) |  | 0% → 100% | 18d → none | was named Tiến hành cải tiến truyền video; resources Nguyên → Nguyen |
| 47 | Making Final report | 2012-07-16 → 2012-07-30 A (+14d) | 2012-07-27 → 2012-08-13 A (+17d) |  | 0% → 100% | 18d → none | was named Hoàn thiện báo cáo về truyền video real-time; resources Nguyên → Nguyen |
| 49 | Final Report review | 2012-07-26 A | 2012-08-08 A |  | 0% → 100% | 0d → none | was named hoàn thiện tài liệu tốt nghiệp; resources cả nhóm → all team |
| 51 | "buffer time!" | 2012-08-09 A | 2012-08-22 A |  | 0% → 100% | 0d → none | resources cả nhóm → all team |

## Version 4 (saved 2012-08-26)

Note of the change: OK

Last finish stays 2012-08-22. Complete tasks 36 → 37.

Changed:

| ID | Task | Start | Finish | Complete | Total float | Predecessors | Other |
| --- | --- | --- | --- | --- | --- | --- | --- |
| 1 | PM tasks | 2012-04-16 A | 2012-08-22 A | 0% → 100% | 0d → none |  |  |
| 14 | Embedded software Architecture design |  |  |  |  | 5, 8 → 5, 12 | was named embedded software Architecture design |
| 16 | Altitude indicator and measurement function design |  |  |  |  |  | was named altitude indicator and measurement function design |
| 19 | **Embedded software coding** |  |  |  |  |  | was named embedded software coding |
| 21 | Sensor's data analysis |  |  |  |  | none → 13 |  |
| 26 | Fix bugs |  |  |  |  |  | was named fix bugs |
| 28 | Create mechanical version 2.0 of quadrocopter |  |  |  |  |  | was named create mechanical version 2.0 of quadrocopter |
| 30 | Integration test of the system |  |  |  |  |  | was named integration test of the system |
| 44 | Intergration test inside VP |  |  |  |  | 40 → 40, 39 |  |
| 51 | "Buffer time!" |  |  |  |  |  | was named "buffer time!" |
