# FUFO Highl level plan

How a schedule from MS Project changed from version to version. A marks actual dates.

## Version 1 (saved 2012-02-12)

Note of the change: improved plan

| ID | WBS | Task | Duration | Start | Finish | Predecessors | Complete | Total float | Constraint |
| --- | --- | --- | --- | --- | --- | --- | --- | --- | --- |
| 1 | 1 | **VP Project** | 74.5d | 2012-02-06 A | 2012-05-18 |  | 4% | 0d |  |
| 2 |  | Make plan | 3d | 2012-02-06 A | 2012-02-08 A |  | 100% |  | start no earlier than 2012-02-06 |
| 3 |  | Review plan and improve | 2d | 2012-02-09 A | 2012-02-10 A | 2 | 100% |  |  |
| 4 | 1.3 | **Training and design for video sending** | 4.5d | 2012-02-20 | 2012-02-24 | 3 |  | 0d |  |
| 5 | 1.3.1 | **Make SRS** | 2.5d | 2012-02-20 | 2012-02-22 |  |  | 0d |  |
| 6 |  | Introduction | 0.5d | 2012-02-20 | 2012-02-20 |  |  | 0d | start no earlier than 2012-02-20 |
| 7 |  | Functional requirement | 2d | 2012-02-20 | 2012-02-22 | 6 |  | 0d |  |
| 8 |  | Non-functional requirement | 1d | 2012-02-21 | 2012-02-22 | 7FF |  | 0d |  |
| 9 |  | Review SRS and improve | 2d | 2012-02-22 | 2012-02-24 | 8 |  | 0d |  |
| 10 | 1.4 | **Design** | 23d | 2012-02-24 | 2012-03-28 | 4 |  | 0d |  |
| 11 | 1.4.1 | **Make HLD** | 9d | 2012-02-24 | 2012-03-08 |  |  | 0d |  |
| 12 |  | Introduction | 0.5d | 2012-02-24 | 2012-02-24 |  |  | 0d |  |
| 13 |  | High level function description | 1.5d | 2012-02-27 | 2012-02-28 | 12 |  | 0d |  |
| 14 |  | System architecture design | 3d | 2012-02-28 | 2012-03-02 | 13 |  | 0d |  |
| 15 |  | Screen design | 1d | 2012-02-28 | 2012-02-29 | 14SS |  | 20d |  |
| 16 |  | Application requirement | 1d | 2012-03-02 | 2012-03-05 | 14 |  | 0d |  |
| 17 |  | Diagrams (activity,…) | 1d | 2012-03-05 | 2012-03-06 | 16 |  | 0d |  |
| 18 |  | Interface | 2d | 2012-03-06 | 2012-03-08 | 17 |  | 0d |  |
| 19 |  | Review HLD and improve | 2d | 2012-03-08 | 2012-03-12 | 18 |  | 0d |  |
| 20 | 1.4.3 | **Make DDD** | 10d | 2012-03-12 | 2012-03-26 | 19 |  | 0d |  |
| 21 |  | Function specification | 1d | 2012-03-12 | 2012-03-13 |  |  | 0d |  |
| 22 |  | Sequence diagram for all functions | 3d | 2012-03-13 | 2012-03-16 | 21 |  | 0d |  |
| 23 |  | Class specification | 5d | 2012-03-16 | 2012-03-23 | 22 |  | 0d |  |
| 24 |  | Screen detail design | 1d | 2012-03-23 | 2012-03-26 | 23 |  | 0d |  |
| 25 |  | Review DDD | 2d | 2012-03-26 | 2012-03-28 | 24 |  | 0d |  |
| 26 | 1.5 | **Coding** | 34d | 2012-03-28 | 2012-05-15 | 10 |  | 0d |  |
| 27 | 1.5.1 | **Send video over Internet** | 24d | 2012-03-28 | 2012-05-01 |  |  | 10d |  |
| 28 |  | Code recording video using back camera on Android | 4d | 2012-03-28 | 2012-04-03 |  |  | 10d |  |
| 29 |  | Code send frame from phone to computer | 10d | 2012-04-03 | 2012-04-17 | 28 |  | 10d |  |
| 30 |  | Code receive frame on computer | 10d | 2012-04-17 | 2012-05-01 | 29 |  | 10d |  |
| 31 | 1.5.2 | **Use h263 and h264 on the video sending** | 24d | 2012-03-28 | 2012-05-01 | 27SS |  | 0d |  |
| 32 |  | Reasearch how to compress and decompress video frame using h263 and h264 | 7d | 2012-03-28 | 2012-04-06 |  |  | 0d |  |
| 33 |  | Coding frame compressing function | 17d | 2012-04-06 | 2012-05-01 | 32 |  | 0d |  |
| 34 |  | Coding frame decompressing function | 17d | 2012-04-06 | 2012-05-01 | 33SS |  | 0d |  |
| 35 | 1.5.3 | **Improving video sending** | 10d | 2012-05-01 | 2012-05-15 | 31 |  | 0d |  |
| 36 |  | Combine code to send compressed video frame and decomress video frame after sending | 10d | 2012-05-01 | 2012-05-15 | 34 |  | 0d |  |
| 37 |  | Testing | 3d | 2012-05-15 | 2012-05-18 | 26 |  | 0d |  |

## Version 2 (saved 2012-03-05)

Note of the change: update plan

Last finish 2012-05-18 → 2012-05-28 (+10d). Complete tasks 2 → 5.

Changed:

| ID | Task | Start | Finish | Duration | Complete | Total float | Predecessors | Other |
| --- | --- | --- | --- | --- | --- | --- | --- | --- |
| 1 | **VP Project** |  | 2012-05-18 → 2012-05-28 (+10d) | 74.5d → 80.5d | 4% → 9% |  |  |  |
| 4 | **Training and design for video sending** | 2012-02-20 → 2012-02-28 A (+8d) | 2012-02-24 → 2012-03-06 (+11d) | 4.5d → 6d | 0% → 77% |  |  |  |
| 5 | **Make SRS** | 2012-02-20 → 2012-02-28 A (+8d) | 2012-02-22 → 2012-03-02 A (+9d) | 2.5d → 4d | 0% → 100% | 0d → none |  |  |
| 6 | Introduction | 2012-02-20 → 2012-02-28 A (+8d) | 2012-02-20 → 2012-02-28 A (+8d) | 0.5d → 1d | 0% → 100% | 0d → none |  | constraint start no earlier than 2012-02-20 → start no earlier than 2012-02-28 |
| 7 | Functional requirement | 2012-02-20 → 2012-02-29 A (+9d) | 2012-02-22 → 2012-03-02 A (+9d) |  | 0% → 100% | 0d → none | 6 → none | constraint none → finish no earlier than 2012-03-02 |
| 8 | Non-functional requirement | 2012-02-21 → 2012-03-02 A (+10d) | 2012-02-22 → 2012-03-02 A (+9d) |  | 0% → 100% | 0d → none | 7FF → none | resources YenTT → NguyenLK |
| 9 | Review SRS and improve | 2012-02-22 → 2012-03-05 A (+12d) | 2012-02-24 → 2012-03-06 (+11d) |  | 0% → 30% |  |  |  |
| 10 | **Design** | 2012-02-24 → 2012-03-07 (+12d) | 2012-03-28 → 2012-04-05 (+8d) | 23d → 21.5d |  |  |  |  |
| 11 | **Make HLD** | 2012-02-24 → 2012-03-07 (+12d) | 2012-03-08 → 2012-03-16 (+8d) | 9d → 7.5d |  |  |  |  |
| 12 | Introduction | 2012-02-24 → 2012-03-07 (+12d) | 2012-02-24 → 2012-03-07 (+12d) |  |  |  |  |  |
| 13 | High level function description | 2012-02-27 → 2012-03-07 (+9d) | 2012-02-28 → 2012-03-08 (+9d) | 1.5d → 1d |  |  |  |  |
| 14 | System architecture design | 2012-02-28 → 2012-03-08 (+9d) | 2012-03-02 → 2012-03-12 (+10d) | 3d → 2d |  |  |  |  |
| 15 | Screen design | 2012-02-28 → 2012-03-12 (+13d) | 2012-02-29 → 2012-03-13 (+13d) |  |  | 20d → 0d | 14SS → 14 | resources YenTT → NguyenLK |
| 16 | Application requirement | 2012-03-02 → 2012-03-13 (+11d) | 2012-03-05 → 2012-03-14 (+9d) |  |  |  | 14 → 15, 14 | resources NguyenLK → NguyenLK; YenTT |
| 17 | Diagrams (activity,…) | 2012-03-05 → 2012-03-14 (+9d) | 2012-03-06 → 2012-03-15 (+9d) |  |  |  |  | resources NguyenLK → NguyenLK; YenTT |
| 18 | Interface | 2012-03-06 → 2012-03-15 (+9d) | 2012-03-08 → 2012-03-16 (+8d) | 2d → 1d |  |  |  | resources NguyenLK → NguyenLK; YenTT |
| 19 | Review HLD and improve | 2012-03-08 → 2012-03-16 (+8d) | 2012-03-12 → 2012-03-20 (+8d) |  |  |  |  |  |
| 20 | **Make DDD** | 2012-03-12 → 2012-03-20 (+8d) | 2012-03-26 → 2012-04-03 (+8d) |  |  |  |  |  |
| 21 | Function specification | 2012-03-12 → 2012-03-20 (+8d) | 2012-03-13 → 2012-03-21 (+8d) |  |  |  |  |  |
| 22 | Sequence diagram for all functions | 2012-03-13 → 2012-03-21 (+8d) | 2012-03-16 → 2012-03-26 (+10d) |  |  |  |  |  |
| 23 | Class specification | 2012-03-16 → 2012-03-26 (+10d) | 2012-03-23 → 2012-04-02 (+10d) |  |  |  |  |  |
| 24 | Screen detail design | 2012-03-23 → 2012-04-02 (+10d) | 2012-03-26 → 2012-04-03 (+8d) |  |  |  |  |  |
| 25 | Review DDD | 2012-03-26 → 2012-04-03 (+8d) | 2012-03-28 → 2012-04-05 (+8d) |  |  |  |  |  |
| 26 | **Coding** | 2012-03-28 → 2012-04-05 (+8d) | 2012-05-15 → 2012-05-23 (+8d) |  |  |  |  |  |
| 27 | **Send video over Internet** | 2012-03-28 → 2012-04-05 (+8d) | 2012-05-01 → 2012-05-09 (+8d) |  |  |  |  |  |
| 28 | Code recording video using back camera on Android | 2012-03-28 → 2012-04-05 (+8d) | 2012-04-03 → 2012-04-11 (+8d) |  |  |  |  |  |
| 29 | Code send frame from phone to computer | 2012-04-03 → 2012-04-11 (+8d) | 2012-04-17 → 2012-04-25 (+8d) |  |  |  |  |  |
| 30 | Code receive frame on computer | 2012-04-17 → 2012-04-25 (+8d) | 2012-05-01 → 2012-05-09 (+8d) |  |  |  |  |  |
| 31 | **Use h263 and h264 on the video sending** | 2012-03-28 → 2012-04-05 (+8d) | 2012-05-01 → 2012-05-09 (+8d) |  |  |  |  |  |
| 32 | Reasearch how to compress and decompress video frame using h263 and h264 | 2012-03-28 → 2012-04-05 (+8d) | 2012-04-06 → 2012-04-16 (+10d) |  |  |  |  |  |
| 33 | Coding frame compressing function | 2012-04-06 → 2012-04-16 (+10d) | 2012-05-01 → 2012-05-09 (+8d) |  |  |  |  |  |
| 34 | Coding frame decompressing function | 2012-04-06 → 2012-04-16 (+10d) | 2012-05-01 → 2012-05-09 (+8d) |  |  |  |  |  |
| 35 | **Improving video sending** | 2012-05-01 → 2012-05-09 (+8d) | 2012-05-15 → 2012-05-23 (+8d) |  |  |  |  |  |
| 36 | Combine code to send compressed video frame and decomress video frame after sending | 2012-05-01 → 2012-05-09 (+8d) | 2012-05-15 → 2012-05-23 (+8d) |  |  |  |  |  |
| 37 | Testing | 2012-05-15 → 2012-05-23 (+8d) | 2012-05-18 → 2012-05-28 (+10d) |  |  |  |  |  |

## Version 3 (saved 2012-03-06)

Note of the change: Add Yen's task

Last finish stays 2012-05-28. Complete tasks 5 → 6.

Added:

| ID | Task | Duration | Start | Finish | Predecessors | Constraint | Resources |
| --- | --- | --- | --- | --- | --- | --- | --- |
| 11 | **Research about TCP/IP** | 4d | 2012-03-06 A | 2012-03-09 |  |  |  |
| 12 | Know how to creat socket server and client | 1d | 2012-03-06 A | 2012-03-06 |  | start no earlier than 2012-03-06 | YenTT |
| 13 | Know about send message between client and server | 1d | 2012-03-07 | 2012-03-07 | 12 |  | YenTT |
| 14 | Code server socket and client socket | 2d | 2012-03-08 | 2012-03-09 | 13 |  | YenTT |

Changed:

| ID | Task | Start | Finish | Duration | Complete | Total float |
| --- | --- | --- | --- | --- | --- | --- |
| 1 | **VP Project** |  |  |  | 9% → 10% |  |
| 4 | **Training and design for video sending** |  | 2012-03-06 A |  | 77% → 100% | 0d → none |
| 9 | Review SRS and improve |  | 2012-03-06 A |  | 30% → 100% | 0d → none |
| 10 | **Design** | 2012-03-07 → 2012-03-06 A (-1d) |  | 21.5d → 22.5d | 0% → 1% |  |
